# MiCasa

Schedule from MS Project, 2015-12-02 to 2016-03-07, costs in $.

## Calendars

- MiCasa: Mon-Fri 09:00-13:00, 14:00-18:00; Sat-Sun off. Exceptions (off unless hours are given): 2015-12-25 (Navidad), 2016-01-01 (Año nuevo).

## Resources

| Resource | Group | Unit | Rate | Cost per use |
| --- | --- | --- | --- | --- |
| Luis Soria | Carpintero |  | 10 |  |
| Nicolas Mendoza | Carpintero |  | 15 |  |
| Juan Salas | Electricista |  | 10 |  |
| Rosa Perez | Decorador interiores |  |  | 100 |
| Julio Rosas | Obreros |  | 8 |  |
| Pablo Samaniego | Obreros |  | 8 |  |
| Mario Hinojoza | Obreros |  | 8 |  |
| Oscar Paredes | Albañiles |  | 10 |  |
| Leoncio Haro | Albañiles |  | 8 |  |
| Mezcladora | Equipo |  | 20 | 10 |
| PC | Equipo |  | 60 | 40 |
| Cemento de 50kg |  | bls(50kg) | 10 |  |
| Ladrillo (millar) |  | millas | 30 |  |
| Tuberia de Agua |  | unid | 2 |  |
| Cable electrico (mt) |  | mt | 1 |  |
| Madera (pie2) |  | p2 | 3 |  |
| Loseta (mt2) |  | m2 | 7 |  |
| Arena de 50kg |  | bls(50kg) | 0.5 |  |
| Transporte |  |  |  |  |
| Cena |  |  |  |  |
| <Recurso nuevo> |  |  |  |  |

## Schedule

| ID | WBS | Task | Type | Duration | Start | Finish | Predecessors | Baseline start | Baseline finish | Baseline duration | Baseline 1 start | Baseline 1 finish | Total slack | Free slack | Resources | Work | Cost | Baseline cost |
| --- | --- | --- | --- | --- | --- | --- | --- | --- | --- | --- | --- | --- | --- | --- | --- | --- | --- | --- |
| 1 | 1 | **proyecto Construccion mi Casa** |  | 67.62d | 2015-12-02 | 2016-03-07 |  | 2015-12-02 | 2016-03-07 | 67.62d | 2015-12-02 | 2016-03-07 | 0d |  |  | 976h | 15,066.78 | 15,066.78 |
| 2 | 1.1 | Inicio | milestone | 0d | 2015-12-02 | 2015-12-02 |  | 2015-12-02 | 2015-12-02 | 0d | 2015-12-02 | 2015-12-02 | 1d | 0d |  |  |  |  |
| 3 | 1.2 | **Fase Cimientos** |  | 5d | 2015-12-02 | 2015-12-08 |  | 2015-12-02 | 2015-12-08 | 5d | 2015-12-02 | 2015-12-08 | 1d |  |  | 80h | 1,265 | 1,265 |
| 4 | 1.2.1 | Inicio de Fase | milestone | 0d | 2015-12-02 | 2015-12-02 | 2 | 2015-12-02 | 2015-12-02 | 0d | 2015-12-02 | 2015-12-02 | 1d | 0d |  |  |  |  |
| 5 | 1.2.2 | Preparar Terreno |  | 1d | 2015-12-02 | 2015-12-02 | 4 | 2015-12-02 | 2015-12-02 | 1d | 2015-12-02 | 2015-12-02 | 1d | 0d | Mario Hinojoza; Pablo Samaniego; Transporte [0.1%] | 16h | 178 | 178 |
| 6 | 1.2.3 | Hacer la Base |  | 4d | 2015-12-03 | 2015-12-08 | 5 | 2015-12-03 | 2015-12-08 | 4d | 2015-12-03 | 2015-12-08 | 1d | 0d | Mario Hinojoza; Pablo Samaniego; Arena de 50kg [150 bls(50kg)]; Cemento de 50kg [50 bls(50kg)] | 64h | 1,087 | 1,087 |
| 7 | 1.2.4 | Fin de Fase | milestone | 0d | 2015-12-08 | 2015-12-08 | 6 | 2015-12-08 | 2015-12-08 | 0d | 2015-12-08 | 2015-12-08 | 1d | 0d |  |  |  |  |
| 8 | 1.3 | **Fase Estructural** |  | 36.25d | 2015-12-08 | 2016-01-29 |  | 2015-12-08 | 2016-01-29 | 36.25d | 2015-12-08 | 2016-01-29 | 0d |  |  | 656h | 9,971 | 9,971 |
| 9 | 1.3.1 | Inicio de Fase | milestone | 0d | 2015-12-08 | 2015-12-08 | 7 | 2015-12-08 | 2015-12-08 | 0d | 2015-12-08 | 2015-12-08 | 1d | 0d |  |  |  |  |
| 10 | 1.3.2 | Columnas y Vigas |  | 5d | 2015-12-09 | 2015-12-15 | 9 | 2015-12-09 | 2015-12-15 | 5d | 2015-12-09 | 2015-12-15 | 1d | 0d | Arena de 50kg [90 bls(50kg)]; Nicolas Mendoza; Oscar Paredes; Cemento de 50kg [30 bls(50kg)] | 80h | 1,345 | 1,345 |
| 11 | 1.3.3 | Paredes |  | 23d | 2015-12-16 | 2016-01-15 | 10 | 2015-12-16 | 2016-01-15 | 23d | 2015-12-16 | 2016-01-15 | 0d |  | Arena de 50kg [30 bls(50kg)]; Oscar Paredes; Nicolas Mendoza; Cemento de 50kg [10 bls(50kg)]; Ladrillo (millar) [5 millas] | 368h | 4,865 | 4,865 |
| 12 | 1.3.4 | Piso |  | 3d | 2015-12-16 | 2015-12-18 | 11SS | 2015-12-16 | 2015-12-18 | 3d | 2015-12-16 | 2015-12-18 | 20d |  | Mario Hinojoza; Oscar Paredes; Arena de 50kg [90 bls(50kg)]; Cemento de 50kg [30 bls(50kg)]; Loseta (mt2) [100 m2] | 48h | 1,477 | 1,477 |
| 13 | 1.3.5 | Encofrado Techo |  | 7d | 2016-01-18 | 2016-01-26 | 11, 12 | 2016-01-18 | 2016-01-26 | 7d | 2016-01-18 | 2016-01-26 | 0d |  | Julio Rosas; Pablo Samaniego; Cena [0.1%] | 112h | 1,096 | 1,096 |
| 14 | 1.3.6 | Llenado Techo |  | 2d | 2016-01-27 | 2016-01-29 | 13 | 2016-01-27 | 2016-01-29 | 2d | 2016-01-27 | 2016-01-29 | 0d |  | Julio Rosas; Nicolas Mendoza; Arena de 50kg [120 bls(50kg)]; Cemento de 50kg [40 bls(50kg)]; Ladrillo (millar) [1 millas]; Mezcladora | 48h | 1,188 | 1,188 |
| 15 | 1.3.7 | Fin de Fase | milestone | 0d | 2016-01-29 | 2016-01-29 | 14 | 2016-01-29 | 2016-01-29 | 0d | 2016-01-29 | 2016-01-29 | 0d |  |  |  |  |  |
| 16 | 1.4 | **Fase Mecanica** |  | 15d | 2016-02-05 | 2016-02-26 |  | 2016-02-05 | 2016-02-26 | 15d | 2016-02-05 | 2016-02-26 | 0d |  |  | 120h | 1,173 | 1,173 |
| 17 | 1.4.1 | Inicio de Fase | milestone | 0d | 2016-02-05 | 2016-02-05 | 15FS+5d | 2016-02-05 | 2016-02-05 | 0d | 2016-02-05 | 2016-02-05 | 0d |  |  |  |  |  |
| 18 | 1.4.2 | Fontaneria |  | 10d | 2016-02-05 | 2016-02-19 | 14FS+5d, 17 | 2016-02-05 | 2016-02-19 | 10d | 2016-02-05 | 2016-02-19 | 0d |  | Arena de 50kg [6 bls(50kg)]; Leoncio Haro; Cemento de 50kg [2 bls(50kg)]; Tuberia de Agua [30 unid] | 80h | 723 | 723 |
| 19 | 1.4.3 | Electricidad |  | 5d | 2016-02-19 | 2016-02-26 | 18 | 2016-02-19 | 2016-02-26 | 5d | 2016-02-19 | 2016-02-26 | 0d |  | Juan Salas; Cable electrico (mt) [50 mt] | 40h | 450 | 450 |
| 20 | 1.4.4 | Fin de Fase | milestone | 0d | 2016-02-26 | 2016-02-26 | 19 | 2016-02-26 | 2016-02-26 | 0d | 2016-02-26 | 2016-02-26 | 6.38d | 0d |  |  |  |  |
| 21 | 1.5 | **Fase Acabado Exterior e Interios** |  | 6.38d | 2016-02-26 | 2016-03-07 |  | 2016-02-26 | 2016-03-07 | 6.38d | 2016-02-26 | 2016-03-07 | 0d |  |  | 120h | 2,657.78 | 2,657.78 |
| 22 | 1.5.1 | Inicio de Fase | milestone | 0d | 2016-02-26 | 2016-02-26 | 20 | 2016-02-26 | 2016-02-26 | 0d | 2016-02-26 | 2016-02-26 | 6.38d |  |  |  |  |  |
| 23 | 1.5.2 | Colocar Puertas |  | 3d | 2016-02-26 | 2016-03-02 | 19 | 2016-02-26 | 2016-03-02 | 3d | 2016-02-26 | 2016-03-02 | 0d |  | Luis Soria; Madera (pie2) [40 p2] | 24h | 360 | 360 |
| 24 | 1.5.3 | Colocar Ventanas |  | 6d | 2016-02-26 | 2016-03-07 | 23SS | 2016-02-26 | 2016-03-07 | 6d | 2016-02-26 | 2016-03-07 | 0d |  | Luis Soria; Madera (pie2) [20 p2] | 48h | 540 | 540 |
| 25 | 1.5.4 | Decoracion |  | 3d | 2016-03-02 | 2016-03-07 | 24FS-3d | 2016-03-02 | 2016-03-07 | 3d | 2016-03-02 | 2016-03-07 | 0d |  | Rosa Perez; PC; Cena [0.1%] | 48h | 1,757.78 | 1,757.78 |
| 26 | 1.5.5 | Fin de Fase | milestone | 0d | 2016-03-07 | 2016-03-07 | 25 | 2016-03-07 | 2016-03-07 | 0d | 2016-03-07 | 2016-03-07 | 0d |  |  |  |  |  |
| 27 | 1.6 | Fin de Proyecto | milestone | 0d | 2016-03-07 | 2016-03-07 | 26 | 2016-03-07 | 2016-03-07 | 0d | 2016-03-07 | 2016-03-07 | 0d |  |  |  |  |  |

Notes:
- 12: La Actividad es de duracion fija
- 14: La Actividad es de duracion fija
