# expediente tecnico

Schedule from MS Project, 2016-02-20 to 2016-06-06, status date 2016-01-18, costs in S/..
Toshiba

## Calendars

- EXPEDIENTE TÉNICO: Mon-Fri 08:00-13:00, 14:00-18:00; Sat-Sun off. Exceptions (off unless hours are given): 2016-03-24 to 2016-03-25 (SEMANA SANTA), 2016-05-01 (DIA DEL TRABAJADOR).

## Resources

| Resource | Rate |
| --- | --- |
| Jefe de proyecto | 12.5 |
| Secretaria | 1.88 |
| Ing. Solar | 7.5 |
| Ing. Gomez | 7.5 |
| Dibujante | 3.75 |
| Asistente | 1.88 |
| Ing. Luyo | 7.5 |
| Ing. Sanchez | 7.5 |

## Schedule

| ID | WBS | Task | Type | Duration | Start | Finish | Predecessors | Total slack | Resources | Work | Cost |
| --- | --- | --- | --- | --- | --- | --- | --- | --- | --- | --- | --- |
| 1 | 1 | **PROYECTO: ELABORACIÓN DE EXPEDIENTE TECNICO** |  | 83d | 2016-02-20 | 2016-06-06 |  | 0d | Jefe de proyecto; Asistente [200%]; Secretaria | 4276h | 23,925.62 |
| 2 | 1.1 | Inicio | milestone | 0d | 2016-02-20 | 2016-02-20 |  | 0d |  |  |  |
| 3 | 1.2 | Elaboración de secuencia |  | 5d | 2016-02-22 | 2016-02-26 | 2 | 78d |  |  |  |
| 4 | 1.3 | **Solicitud** |  | 20d | 2016-02-22 | 2016-03-16 | 2 | 0d |  |  |  |
| 5 | 1.3.1 | Recepción |  | 15d | 2016-02-22 | 2016-03-10 |  | 0d |  |  |  |
| 6 | 1.3.2 | Clasificación y selección |  | 5d | 2016-03-10 | 2016-03-16 | 5 | 0d |  |  |  |
| 7 | 1.4 | **Inspección** |  | 9d | 2016-03-16 | 2016-03-30 | 4 | 0d |  | 320h | 2,400 |
| 8 | 1.4.1 | Visita técnica zona A |  | 10d | 2016-03-16 | 2016-03-30 |  | 0d | Ing. Solar | 80h | 600 |
| 9 | 1.4.2 | Visita técnica zona B |  | 10d | 2016-03-16 | 2016-03-30 |  | 0d | Ing. Luyo | 80h | 600 |
| 10 | 1.4.3 | Visita técnica zona C |  | 10d | 2016-03-16 | 2016-03-30 |  | 0d | Ing. Gomez | 80h | 600 |
| 11 | 1.4.4 | Visita técnica zona D |  | 10d | 2016-03-16 | 2016-03-30 |  | 0d | Ing. Sanchez | 80h | 600 |
| 12 | 1.5 | **Selección** |  | 5.62d | 2016-03-30 | 2016-04-06 | 7 | 0d |  | 160h | 1,200 |
| 13 | 1.5.1 | Selección de solicitudes con visita técnica |  | 5d | 2016-03-30 | 2016-04-06 |  | 0d | Ing. Gomez; Ing. Solar; Ing. Luyo; Ing. Sanchez | 160h | 1,200 |
| 14 | 1.6 | **Estudio de suelo** |  | 5.62d | 2016-04-06 | 2016-04-13 | 12 | 0d |  | 160h | 1,200 |
| 15 | 1.6.1 | Estudios de suelo zona A |  | 5d | 2016-04-06 | 2016-04-13 |  | 0d | Ing. Solar | 40h | 300 |
| 16 | 1.6.2 | Estudios de suelo zona B |  | 5d | 2016-04-06 | 2016-04-13 |  | 0d | Ing. Luyo | 40h | 300 |
| 17 | 1.6.3 | Estudios de suelo zona C |  | 5d | 2016-04-06 | 2016-04-13 |  | 0d | Ing. Gomez | 40h | 300 |
| 18 | 1.6.4 | Estudios de suelo zona D |  | 5d | 2016-04-06 | 2016-04-13 |  | 0d | Ing. Sanchez | 40h | 300 |
| 19 | 1.7 | **Diseño y dibujo** |  | 20.25d | 2016-04-13 | 2016-05-09 | 14 | 0d |  | 576h | 3,360 |
| 20 | 1.7.1 | Diseño zona A |  | 10d | 2016-04-13 | 2016-04-27 |  | 0d | Ing. Solar | 80h | 600 |
| 21 | 1.7.2 | Dibujo zona A |  | 8d | 2016-04-27 | 2016-05-09 | 20 | 0d | Dibujante | 64h | 240 |
| 22 | 1.7.3 | Diseño zona B |  | 10d | 2016-04-13 | 2016-04-27 |  | 0d | Ing. Luyo | 80h | 600 |
| 23 | 1.7.4 | Dibujo zona B |  | 8d | 2016-04-27 | 2016-05-09 | 22 | 0d | Dibujante | 64h | 240 |
| 24 | 1.7.5 | Diseño zona C |  | 10d | 2016-04-13 | 2016-04-27 |  | 0d | Ing. Gomez | 80h | 600 |
| 25 | 1.7.6 | Dibujo zona C |  | 8d | 2016-04-27 | 2016-05-09 | 24 | 0d | Dibujante | 64h | 240 |
| 26 | 1.7.7 | Diseño zona D |  | 10d | 2016-04-13 | 2016-04-27 |  | 0d | Ing. Sanchez | 80h | 600 |
| 27 | 1.7.8 | Dibujo zona D |  | 8d | 2016-04-27 | 2016-05-09 | 26 | 0d | Dibujante | 64h | 240 |

| ID | WBS | Task | Type | Duration | Start | Finish | Predecessors | Total slack | Resources | Work | Cost |
| --- | --- | --- | --- | --- | --- | --- | --- | --- | --- | --- | --- |
| 28 | 1.8 | **Elaboración de presupuesto** |  | 11.25d | 2016-05-09 | 2016-05-23 |  | 0d |  | 320h | 2,400 |
| 29 | 1.8.1 | Elaboración zona A |  | 10d | 2016-05-09 | 2016-05-23 | 21 | 0d | Ing. Solar | 80h | 600 |
| 30 | 1.8.2 | Elaboración zona B |  | 10d | 2016-05-09 | 2016-05-23 | 23 | 0d | Ing. Luyo | 80h | 600 |
| 31 | 1.8.3 | Elaboración zona C |  | 10d | 2016-05-09 | 2016-05-23 | 25 | 0d | Ing. Gomez | 80h | 600 |
| 32 | 1.8.4 | Elaboración zona D |  | 10d | 2016-05-09 | 2016-05-23 | 27 | 0d | Ing. Sanchez | 80h | 600 |
| 33 | 1.9 | **Elaboración del expediente** |  | 11.25d | 2016-05-23 | 2016-06-06 |  | 0d |  | 320h | 2,400 |
| 34 | 1.9.1 | Elaboración zona A |  | 10d | 2016-05-23 | 2016-06-06 | 29 | 0d | Ing. Solar | 80h | 600 |
| 35 | 1.9.2 | Elaboración zona B |  | 10d | 2016-05-23 | 2016-06-06 | 30 | 0d | Ing. Luyo | 80h | 600 |
| 36 | 1.9.3 | Elaboración zona C |  | 10d | 2016-05-23 | 2016-06-06 | 31 | 0d | Ing. Gomez | 80h | 600 |
| 37 | 1.9.4 | Elaboración zona D |  | 10d | 2016-05-23 | 2016-06-06 | 32 | 0d | Ing. Sanchez | 80h | 600 |
| 38 | 1.10 | Fin | milestone | 0d | 2016-06-06 | 2016-06-06 | 33 | 0d |  |  |  |
