# Proyecto Final_Mermelada de Carambola

Schedule from MS Project, 2015-11-02 to 2016-05-02, costs in S/., A marks actual dates.

## Calendars

- Mermelada Carambola: Mon-Fri 09:00-13:00, 14:00-18:00; Sat-Sun off. Exceptions (off unless hours are given): 2015-12-25 (25 no se trabaja por navidad), 2016-01-01 (No se trabaja por año nuevo).

## Resources

| Resource | Rate | Cost per use |
| --- | --- | --- |
| Agogado | 6.25 |  |
| Erick Saldaña | 6.25 |  |
| Carla Isaías | 6.25 |  |
| Jorge Andiles | 6.25 |  |
| Carlos pami | 6.25 |  |
| Tomas Antón | 6.25 |  |
| Almuerzo |  |  |
| Esteban alcorzo | 6.25 |  |
| Sabrina Sobria | 6.25 |  |
| Diseñador gráfico | 6.25 |  |
| Ingeniero industrial | 6.25 |  |
| Ingeniero ambiental |  | 3000 |
| Obrero 1 | 6.25 |  |
| Obrero 2 | 3.75 |  |
| Obrero 3 | 3.75 |  |
| Obrero 4 | 3.75 |  |
| Obrero 5 | 3.75 |  |
| Compra terreno |  |  |
| Materiales para la construcción |  |  |
| Acabado interior y exterior del centro de trabajo |  |  |
| Compra de equipos |  |  |

## Schedule

| ID | WBS | Task | Type | Duration | Start | Finish | Predecessors | Complete | Remaining | Baseline start | Baseline finish | Baseline duration | Total slack | Resources | Work | Actual work | Cost | Baseline cost | Actual cost |
| --- | --- | --- | --- | --- | --- | --- | --- | --- | --- | --- | --- | --- | --- | --- | --- | --- | --- | --- | --- |
| 1 | 1 | **Proyecto: Mermelada de Carambola** |  | 129d | 2015-11-02 A | 2016-05-02 |  | 36% | 82.21d | 2015-11-02 | 2016-05-02 | 129d | 0d |  | 5096h | 1496h | 163,950 | 163,950 | 9,350 |
| 2 | 1.1 | **Aspectos generales** |  | 14d | 2015-11-02 A | 2015-11-19 A |  | 100% |  | 2015-11-02 | 2015-11-19 | 14d |  |  | 336h | 336h | 4,100 | 4,100 | 2,100 |
| 3 | 1.1.1 | Inicio | milestone | 0d | 2015-11-02 A | 2015-11-02 A |  | 100% |  | 2015-11-02 | 2015-11-02 |  |  |  |  |  |  |  |  |
| 4 | 1.1.2 | Nombre del proyecto |  | 5d | 2015-11-02 A | 2015-11-06 A |  | 100% |  | 2015-11-02 | 2015-11-06 | 5d |  | Carla Isaías; Jorge Andiles; Tomas Antón | 120h | 120h | 750 | 750 | 750 |
| 5 | 1.1.3 | Análisis economico del país |  | 5d | 2015-11-02 A | 2015-11-06 A | 4SS | 100% |  | 2015-11-02 | 2015-11-06 | 5d |  | Erick Saldaña; Carlos pami | 80h | 80h | 500 | 500 | 500 |
| 6 | 1.1.4 | Revisión del Marco legal |  | 5d | 2015-11-09 A | 2015-11-13 A | 5 | 100% |  | 2015-11-09 | 2015-11-13 | 5d |  | Agogado | 40h | 40h | 250 | 250 | 250 |
| 7 | 1.1.5 | Clasificación del proyecto |  | 3d | 2015-11-16 A | 2015-11-18 A | 6 | 100% |  | 2015-11-16 | 2015-11-18 | 3d |  | Agogado; Carla Isaías | 48h | 48h | 300 | 300 | 300 |
| 8 | 1.1.6 | Presentacion de los socios del proyecto |  | 1d | 2015-11-19 A | 2015-11-19 A | 7 | 100% |  | 2015-11-19 | 2015-11-19 | 1d |  | Almuerzo [0.1%]; Agogado; Carla Isaías; Carlos pami; Erick Saldaña; Jorge Andiles; Tomas Antón | 48h | 48h | 2,300 | 2,300 | 300 |
| 9 | 1.1.7 | Fin | milestone | 0d | 2015-11-02 A | 2015-11-02 A |  | 100% |  | 2015-11-02 | 2015-11-02 |  |  |  |  |  |  |  |  |
| 10 | 1.2 | **Estudio del mercado** |  | 59d | 2015-11-02 A | 2016-01-25 |  | 85% | 9.08d | 2015-11-02 | 2016-01-25 | 59d | 70d |  | 1400h | 1160h | 8,750 | 8,750 | 7,250 |
| 11 | 1.2.1 | Inicio | milestone | 0d | 2015-11-02 A | 2015-11-02 A |  | 100% |  | 2015-11-02 | 2015-11-02 |  |  |  |  |  |  |  |  |
| 12 | 1.2.2 | Caracteristicas comerciales del producto |  | 3d | 2015-11-20 A | 2015-11-24 A | 8 | 100% |  | 2015-11-20 | 2015-11-24 | 3d |  | Erick Saldaña; Jorge Andiles | 48h | 48h | 300 | 300 | 300 |
| 13 | 1.2.3 | Usos principales y secundarios |  | 3d | 2015-11-25 A | 2015-11-27 A | 12 | 100% |  | 2015-11-25 | 2015-11-27 | 3d |  | Tomas Antón; Carlos pami | 48h | 48h | 300 | 300 | 300 |
| 14 | 1.2.4 | Analisis de productos sustitutos |  | 4d | 2015-11-25 A | 2015-11-30 A | 13SS | 100% |  | 2015-11-25 | 2015-11-30 | 4d |  | Erick Saldaña; Carla Isaías | 64h | 64h | 400 | 400 | 400 |
| 15 | 1.2.5 | Analisis de productos complementarios |  | 4d | 2015-12-01 A | 2015-12-04 A | 14 | 100% |  | 2015-12-01 | 2015-12-04 | 4d |  | Carlos pami; Tomas Antón | 64h | 64h | 400 | 400 | 400 |
| 16 | 1.2.6 | Analisis de la demanda historica |  | 4d | 2015-12-07 A | 2015-12-10 A | 15 | 100% |  | 2015-12-07 | 2015-12-10 | 4d |  | Tomas Antón; Carla Isaías | 64h | 64h | 400 | 400 | 400 |
| 17 | 1.2.7 | Analisis de la expectativa del crecimiento de la demanda |  | 4d | 2015-12-11 A | 2015-12-16 A | 16 | 100% |  | 2015-12-11 | 2015-12-16 | 4d |  | Erick Saldaña; Carla Isaías; Carlos pami; Jorge Andiles; Tomas Antón | 160h | 160h | 1,000 | 1,000 | 1,000 |
| 18 | 1.2.8 | Elasticiad de la demanda |  | 1d | 2015-12-17 A | 2015-12-17 A | 17 | 100% |  | 2015-12-17 | 2015-12-17 | 1d |  | Carla Isaías | 8h | 8h | 50 | 50 | 50 |
| 19 | 1.2.9 | Estudio de la demanda con informacion primaria |  | 5d | 2015-12-17 A | 2015-12-23 A | 18SS | 100% |  | 2015-12-17 | 2015-12-23 | 5d |  | Tomas Antón; Jorge Andiles; Erick Saldaña; Carlos pami | 160h | 160h | 1,000 | 1,000 | 1,000 |
| 20 | 1.2.10 | Tipo de consumidor |  | 2d | 2015-12-24 A | 2015-12-28 A | 19 | 100% |  | 2015-12-24 | 2015-12-28 | 2d |  | Tomas Antón; Jorge Andiles; Erick Saldaña; Carlos pami; Carla Isaías | 80h | 80h | 500 | 500 | 500 |
| 21 | 1.2.11 | Estudio de la muestra |  | 1d | 2015-12-29 A | 2015-12-29 A | 20 | 100% |  | 2015-12-29 | 2015-12-29 | 1d |  | Carla Isaías | 8h | 8h | 50 | 50 | 50 |
| 22 | 1.2.12 | Identificacion de la competencia |  | 4d | 2015-12-30 A | 2016-01-05 A | 21 | 100% |  | 2015-12-30 | 2016-01-05 | 4d |  | Tomas Antón; Jorge Andiles; Erick Saldaña | 96h | 96h | 600 | 600 | 600 |
| 23 | 1.2.13 | Caracteristicas de la oferta de materia prima e insumos |  | 2d | 2015-12-30 A | 2015-12-31 A | 22SS | 100% |  | 2015-12-30 | 2015-12-31 | 2d |  | Carla Isaías; Carlos pami | 32h | 32h | 200 | 200 | 200 |
| 24 | 1.2.14 | Evolucion previsible de la oferta |  | 3d | 2015-12-30 A | 2016-01-04 A | 23SS | 100% |  | 2015-12-30 | 2016-01-04 | 3d |  | Esteban alcorzo; Sabrina Sobria | 48h | 48h | 300 | 300 | 300 |
| 25 | 1.2.15 | Identificacion de como vende la competencia |  | 5d | 2016-01-05 A | 2016-01-11 A | 24 | 100% |  | 2016-01-05 | 2016-01-11 | 5d |  | Carlos pami; Esteban alcorzo; Sabrina Sobria | 120h | 120h | 750 | 750 | 750 |
| 26 | 1.2.16 | Plan de marketing |  | 2w | 2016-01-12 | 2016-01-25 | 25 |  |  | 2016-01-12 | 2016-01-25 | 2w | 70d | Sabrina Sobria; Tomas Antón; Jorge Andiles | 240h |  | 1,500 | 1,500 |  |
| 27 | 1.2.17 | Empaque del producto |  | 5d | 2016-01-12 A | 2016-01-18 A | 26SS | 100% |  | 2016-01-12 | 2016-01-18 | 5d |  | Carla Isaías; Carlos pami; Erick Saldaña | 120h | 120h | 750 | 750 | 750 |
| 28 | 1.2.18 | Logotipo, slogan |  | 1w | 2016-01-12 A | 2016-01-18 A | 27SS | 100% |  | 2016-01-12 | 2016-01-18 | 1w |  | Diseñador gráfico | 40h | 40h | 250 | 250 | 250 |
| 29 | 1.2.19 | Fin | milestone | 0d | 2015-11-02 | 2015-11-02 |  |  |  | 2015-11-02 | 2015-11-02 |  | 129d |  |  |  |  |  |  |

Notes:
- 4: Aquí se debatirá el mejor nombre del producto
- 5: Se hablará del entorn económico del pais, si combiene o no invertir
- 6: Se revisará las leyes o normas que favoezcan al establecimiento de la empresa
- 7: S irá al INEI para ver el CIIU del producto
- 8: Todos los socios del proyecto se presentarán y hablarán del objetivo del proyecto
- 20: Se eligió el consumidor de la clase B y C

| ID | WBS | Task | Type | Duration | Start | Finish | Predecessors | Baseline start | Baseline finish | Baseline duration | Total slack | Resources | Work | Cost | Baseline cost |
| --- | --- | --- | --- | --- | --- | --- | --- | --- | --- | --- | --- | --- | --- | --- | --- |
| 30 | 1.3 | **Estudio del tamaño** |  | 59d | 2015-11-02 | 2016-01-25 |  | 2015-11-02 | 2016-01-25 | 59d | 54d |  | 160h | 1,000 | 1,000 |
| 31 | 1.3.1 | Inicio | milestone | 0d | 2015-11-02 | 2015-11-02 |  | 2015-11-02 | 2015-11-02 |  | 129d |  |  |  |  |
| 32 | 1.3.2 | Elección del tamaño óptimo |  | 1w | 2016-01-19 | 2016-01-25 | 28 | 2016-01-19 | 2016-01-25 | 1w | 0d | Carla Isaías; Carlos pami; Erick Saldaña; Esteban alcorzo | 160h | 1,000 | 1,000 |
| 33 | 1.3.3 | Fin | milestone | 0d | 2015-11-02 | 2015-11-02 |  | 2015-11-02 | 2015-11-02 |  | 129d |  |  |  |  |
| 34 | 1.4 | **Estudio de la localización** |  | 69d | 2015-11-02 | 2016-02-08 |  | 2015-11-02 | 2016-02-08 | 69d | 59d |  | 600h | 3,750 | 3,750 |
| 35 | 1.4.1 | Inicio | milestone | 0d | 2015-11-02 | 2015-11-02 |  | 2015-11-02 | 2015-11-02 |  | 129d |  |  |  |  |
| 36 | 1.4.2 | Macrolocalización |  | 1w | 2016-01-26 | 2016-02-01 | 32 | 2016-01-26 | 2016-02-01 | 1w | 0d | Carla Isaías; Carlos pami; Diseñador gráfico; Erick Saldaña; Esteban alcorzo; Jorge Andiles; Sabrina Sobria; Tomas Antón | 320h | 2,000 | 2,000 |
| 37 | 1.4.3 | Microlocalización |  | 1w | 2016-02-02 | 2016-02-08 | 36 | 2016-02-02 | 2016-02-08 | 1w | 0d | Almuerzo [0.1%]; Carla Isaías; Carlos pami; Erick Saldaña; Esteban alcorzo; Jorge Andiles; Sabrina Sobria; Tomas Antón | 280h | 1,750 | 1,750 |
| 38 | 1.4.4 | Fin | milestone | 0d | 2015-11-02 | 2015-11-02 |  | 2015-11-02 | 2015-11-02 |  | 129d |  |  |  |  |
| 39 | 1.5 | **Estudio de ingeniería** |  | 114d | 2015-11-02 | 2016-04-11 |  | 2015-11-02 | 2016-04-11 | 114d | 15d |  | 680h | 84,250 | 84,250 |
| 40 | 1.5.1 | Inicio | milestone | 0d | 2015-11-02 | 2015-11-02 |  | 2015-11-02 | 2015-11-02 |  | 129d |  |  |  |  |
| 41 | 1.5.2 | Compra de equipos |  | 1mo | 2016-02-09 | 2016-03-07 | 37 | 2016-02-09 | 2016-03-07 | 1mo | 0d | Esteban alcorzo; Jorge Andiles; Compra de equipos [0.1%] | 320h | 82,000 | 82,000 |
| 42 | 1.5.3 | Obtencion de la mermelada |  | 2w | 2016-03-08 | 2016-03-21 | 41 | 2016-03-08 | 2016-03-21 | 2w | 0d | Ingeniero industrial | 80h | 500 | 500 |
| 43 | 1.5.4 | Contratación de proveedor de luz |  | 1w | 2016-03-22 | 2016-03-28 | 42 | 2016-03-22 | 2016-03-28 | 1w | 0d | Agogado; Esteban alcorzo | 80h | 500 | 500 |
| 44 | 1.5.5 | Contratación de mano de obra |  | 1w | 2016-03-29 | 2016-04-04 | 43 | 2016-03-29 | 2016-04-04 | 1w | 0d | Carla Isaías; Sabrina Sobria | 80h | 500 | 500 |
| 45 | 1.5.6 | Análisis del organigrama funcional de la empresa |  | 1w | 2016-04-05 | 2016-04-11 | 44 | 2016-04-05 | 2016-04-11 | 1w | 0d | Agogado; Erick Saldaña; Jorge Andiles | 120h | 750 | 750 |
| 46 | 1.5.7 | Fin | milestone | 0d | 2015-11-02 | 2015-11-02 |  | 2015-11-02 | 2015-11-02 |  | 129d |  |  |  |  |
| 47 | 1.6 | **Estudio del financiamiento** |  | 119d | 2015-11-02 | 2016-04-18 |  | 2015-11-02 | 2016-04-18 | 119d | 10d |  | 120h | 750 | 750 |
| 48 | 1.6.1 | Inicio | milestone | 0d | 2015-11-02 | 2015-11-02 |  | 2015-11-02 | 2015-11-02 |  | 129d |  |  |  |  |
| 49 | 1.6.2 | Analisis del estudio del financiamento |  | 1w | 2016-04-12 | 2016-04-18 | 45 | 2016-04-12 | 2016-04-18 | 1w | 0d | Agogado; Carlos pami; Erick Saldaña | 120h | 750 | 750 |
| 50 | 1.6.3 | Fin | milestone | 0d | 2015-11-02 | 2015-11-02 |  | 2015-11-02 | 2015-11-02 |  | 129d |  |  |  |  |
| 51 | 1.7 | **Presupuesto de ingresos y egresos** |  | 129d | 2015-11-02 | 2016-05-02 |  | 2015-11-02 | 2016-05-02 | 129d | 0d |  | 400h | 2,500 | 2,500 |
| 52 | 1.7.1 | Inicio | milestone | 0d | 2015-11-02 | 2015-11-02 |  | 2015-11-02 | 2015-11-02 |  | 129d |  |  |  |  |
| 53 | 1.7.2 | Estudio del presupuesto |  | 2w | 2016-04-19 | 2016-05-02 | 49 | 2016-04-19 | 2016-05-02 | 2w | 0d | Agogado; Esteban alcorzo; Sabrina Sobria; Carlos pami; Carla Isaías | 400h | 2,500 | 2,500 |
| 54 | 1.7.3 | Fin | milestone | 0d | 2015-11-02 | 2015-11-02 |  | 2015-11-02 | 2015-11-02 |  | 129d |  |  |  |  |

Notes:
- 36: Se debatirá cual es el mejor distrito para distribuir el producto
- 37: Se debatirá cuales son los beneficios de la zona de residencia del producto
- 39: Se comprará equipos y se verá cuanto se demorá en hacer un producto en forma óptima
- 49: Se visitarán varios bancos
- 53: Se hará proyecciones económicas de 5 años del proyecto: recursos humanos

| ID | WBS | Task | Type | Duration | Start | Finish | Predecessors | Baseline start | Baseline finish | Baseline duration | Total slack | Free slack | Constraint | Resources | Work | Cost | Baseline cost |
| --- | --- | --- | --- | --- | --- | --- | --- | --- | --- | --- | --- | --- | --- | --- | --- | --- | --- |
| 55 | 1.8 | **Analisis de la sensibilidad** |  | 124d | 2015-11-02 | 2016-04-25 |  | 2015-11-02 | 2016-04-25 | 124d | 5d |  |  |  | 120h | 750 | 750 |
| 56 | 1.8.1 | Inicio | milestone | 0d | 2015-11-02 | 2015-11-02 |  | 2015-11-02 | 2015-11-02 |  | 129d |  |  |  |  |  |  |
| 57 | 1.8.2 | Estudio del análisis de sensibilidad |  | 1w | 2016-04-19 | 2016-04-25 | 53SS | 2016-04-19 | 2016-04-25 | 1w | 5d |  |  | Tomas Antón; Jorge Andiles; Erick Saldaña | 120h | 750 | 750 |
| 58 | 1.8.3 | Fin | milestone | 0d | 2015-11-02 | 2015-11-02 |  | 2015-11-02 | 2015-11-02 |  | 129d |  |  |  |  |  |  |
| 59 | 1.9 | **Estudio del impacto ambiental** |  | 74d | 2015-11-02 | 2016-02-15 |  | 2015-11-02 | 2016-02-15 | 74d | 55d |  |  |  | 80h | 3,000 | 3,000 |
| 60 | 1.9.1 | Inicio | milestone | 0d | 2015-11-02 | 2015-11-02 |  | 2015-11-02 | 2015-11-02 |  | 129d |  |  |  |  |  |  |
| 61 | 1.9.2 | Impacto ambiental |  | 2w | 2016-02-02 | 2016-02-15 | 37SS | 2016-02-02 | 2016-02-15 | 2w | 23d | 0d |  | Ingeniero ambiental | 80h | 3,000 | 3,000 |
| 62 | 1.9.3 | Fin | milestone | 0d | 2015-11-02 | 2015-11-02 |  | 2015-11-02 | 2015-11-02 |  | 129d |  |  |  |  |  |  |
| 63 | 1.10 | **Construcción** |  | 104d | 2015-11-02 | 2016-03-28 |  | 2015-11-02 | 2016-03-28 | 104d | 25d |  |  |  | 1200h | 55,100 | 55,100 |
| 64 | 1.10.1 | Inicio | milestone | 0d | 2015-11-02 | 2015-11-02 |  | 2015-11-02 | 2015-11-02 |  | 129d |  |  |  |  |  |  |
| 65 | 1.10.2 | Construcción del centro de trabajo |  | 30d | 2016-02-16 | 2016-03-28 | 61 | 2016-02-16 | 2016-03-28 | 30d | 23d |  | finish no later than 2016-04-28 | Obrero 1; Obrero 2; Obrero 3; Obrero 4; Obrero 5; Compra terreno [0.1%]; Materiales para la construcción [0.1%]; Acabado interior y exterior del centro de trabajo [0.1%] | 1200h | 55,100 | 55,100 |
| 66 | 1.10.3 | Fin | milestone | 0d | 2015-11-02 | 2015-11-02 |  | 2015-11-02 | 2015-11-02 |  | 129d |  |  |  |  |  |  |

Notes:
- 57: Se hará simulaciones económicas para ver la dinámica del producto
- 61: El ing ambiental cobrará por todo el trabajo hecho no cobrará ni por mes ni por día
- 65: Se comprará el terreno, materiales de contrucción, materiales de acabado interno como externo y contratará a los obreros según la duración prevista en contrato de la obra
