# LEAD ACID PLANT PROJECT - 27.01.15

Schedule from MS Project, 2009-01-05 to 2010-02-09, status date 2009-04-05, costs in S., A marks actual dates.
HP

## Calendars

- Trabajo Final: Mon-Sun 08:00-13:00, 14:00-17:00.

## Resources

| Resource | Unit | Rate |
| --- | --- | --- |
| Gerente de proyecto |  | 100 |
| Jefe de Ingenieria |  | 90 |
| Jefe de proyecto |  | 90 |
| Jefe de Adquisiciones |  | 90 |
| Administrador |  | 90 |
| Equipo de proyecto |  | 50 |
| Equipo de ingenieria |  | 45 |
| Equipo de contrataciones |  | 45 |
| Equipo de contruccion |  | 45 |
| Equipo de puesta en marcha |  | 45 |
| Grua (90 Ton) |  | 100 |
| Cemento tipo I | Bolsa | 20 |
| Transporte |  |  |

## Schedule

| ID | WBS | Task | Type | Duration | Start | Finish | Predecessors | Complete | Remaining | Baseline start | Baseline finish | Baseline duration | Total slack | Free slack | Resources | Work | Actual work | Cost | Baseline cost | Actual cost |
| --- | --- | --- | --- | --- | --- | --- | --- | --- | --- | --- | --- | --- | --- | --- | --- | --- | --- | --- | --- | --- |
| 1 | 1 | **PROYECTO DE PLANTA DE METALES** |  | 400d | 2009-01-05 A | 2010-02-09 |  | 30% | 279.49d | 2009-01-05 | 2010-02-09 | 400d | 0d |  |  | 48250h | 10528.8h | 2,875,499.95 | 2,875,499.95 | 617,192.48 |
| 2 | 1.1 | **1.1 GESTION DE PROYECTO** |  | 400d | 2009-01-05 A | 2010-02-09 |  | 23% | 307.97d | 2009-01-05 | 2010-02-09 | 400d | 0d |  |  | 18960h | 4320h | 1,358,799.93 | 1,358,799.93 | 308,829.98 |
| 3 | 1.1.1 | 1.1.1 INICIO DE PROYECTO | milestone | 0d | 2009-01-05 A | 2009-01-05 A |  | 100% |  | 2009-01-05 | 2009-01-05 | 0d |  |  |  |  |  |  |  |  |
| 4 | 1.1.2 | 1.1.2 FIN DE PROYECTO | milestone | 0d | 2010-02-09 | 2010-02-09 | 34, 5 |  |  | 2010-02-09 | 2010-02-09 | 0d | 0d |  |  |  |  |  |  |  |
| 5 | 1.1.3 | 1.1.3 GESTION DE PROYECTO |  | 395d | 2009-01-05 A | 2010-02-04 | 3 | 23% | 304.12d | 2009-01-05 | 2010-02-04 | 395d | 5d |  | Gerente de proyecto; Jefe de Ingenieria [50%]; Jefe de proyecto [50%]; Jefe de Adquisiciones [50%]; Administrador [50%]; Equipo de proyecto [300%] | 18960h | 4320h | 1,358,799.93 | 1,358,799.93 | 308,829.98 |
| 6 | 1.2 | **1.2 INGENIERIA** |  | 160d | 2009-01-05 A | 2009-06-14 A |  | 100% |  | 2009-01-05 | 2009-06-14 | 160d |  |  |  | 4860h | 4860h | 243,000 | 243,000 | 243,000 |
| 7 | 1.2.1 | 1.2.1 A01 DISEÑO CIVIL BASICO |  | 40d | 2009-01-05 A | 2009-02-14 A | 3 | 100% |  | 2009-01-05 | 2009-02-14 | 40d |  |  | Jefe de Ingenieria [25%]; Equipo de ingenieria [200%] | 720h | 720h | 36,000 | 36,000 | 36,000 |
| 8 | 1.2.2 | 1.2.2 A02 DISEÑO MECANICA BASICA |  | 40d | 2009-02-09 A | 2009-03-21 A | 7FS-5d | 100% |  | 2009-02-09 | 2009-03-21 | 40d |  |  | Jefe de Ingenieria [25%]; Equipo de ingenieria [200%] | 720h | 720h | 36,000 | 36,000 | 36,000 |
| 9 | 1.2.3 | 1.2.3 A03 DISEÑO BASICO ELECTRICO |  | 40d | 2009-03-16 A | 2009-04-25 A | 8FS-5d | 100% |  | 2009-03-16 | 2009-04-25 | 40d |  |  | Jefe de Ingenieria [25%]; Equipo de ingenieria [200%] | 720h | 720h | 36,000 | 36,000 | 36,000 |
| 10 | 1.2.4 | 1.2.4 A04 DISEÑO CIVIL DE DETALLES |  | 50d | 2009-02-14 A | 2009-04-05 A | 7 | 100% |  | 2009-02-14 | 2009-04-05 | 50d |  |  | Jefe de Ingenieria [25%]; Equipo de contruccion [200%] | 900h | 900h | 45,000 | 45,000 | 45,000 |
| 11 | 1.2.5 | 1.2.5 A05 DISEÑO MECANICA DE DETALLES |  | 50d | 2009-03-21 A | 2009-05-10 A | 8 | 100% |  | 2009-03-21 | 2009-05-10 | 50d |  |  | Jefe de Ingenieria [25%]; Equipo de ingenieria [200%] | 900h | 900h | 45,000 | 45,000 | 45,000 |
| 12 | 1.2.6 | 1.2.6 A06 DISEÑO ELECTRICO DE DETALLES |  | 50d | 2009-04-25 A | 2009-06-14 A | 9 | 100% |  | 2009-04-25 | 2009-06-14 | 50d |  |  | Jefe de Ingenieria [25%]; Equipo de ingenieria [200%] | 900h | 900h | 45,000 | 45,000 | 45,000 |
| 13 | 1.3 | **1.3 CONTRATACION** |  | 130d | 2009-04-05 A | 2009-08-13 |  | 29% | 92.53d | 2009-04-05 | 2009-08-13 | 130d | 30d |  |  | 4680h | 1348.75h | 228,000 | 228,000 | 65,362.5 |
| 14 | 1.3.1 | 1.3.1 A01 CONTRATO CIVILES |  | 25d | 2009-04-05 A | 2009-04-30 | 10 | 4% | 24.12d | 2009-04-05 | 2009-04-30 | 25d | 21d | 0d | Jefe de Adquisiciones [25%]; Equipo de contrataciones [300%] | 650h | 22.75h | 31,500 | 31,500 | 1,102.5 |
| 15 | 1.3.2 | 1.3.2 A02 CONTRATO MECANICO |  | 25d | 2009-05-10 A | 2009-06-04 | 11 | 60% | 10d | 2009-05-10 | 2009-06-04 | 25d | 15d | 0d | Jefe de Adquisiciones [25%]; Equipo de contrataciones [300%] | 650h | 390h | 31,500 | 31,500 | 18,900 |
| 16 | 1.3.3 | 1.3.3 A03 CONTRATO ELECTRICO |  | 25d | 2009-06-14 A | 2009-07-09 | 12 | 60% | 10d | 2009-06-14 | 2009-07-09 | 25d | 30d | 0d | Jefe de Adquisiciones [25%]; Equipo de contrataciones [300%] | 650h | 390h | 31,500 | 31,500 | 18,900 |
| 17 | 1.3.4 | 1.3.4 A04 PROVEEDORES Y EQUIPO CIVILES |  | 35d | 2009-04-30 A | 2009-06-04 | 14 | 60% | 14d | 2009-04-30 | 2009-06-04 | 35d | 0d |  | Jefe de Adquisiciones [25%]; Equipo de contrataciones [300%]; Transporte [0.1%] | 910h | 546h | 44,500 | 44,500 | 26,460 |
| 18 | 1.3.5 | 1.3.5 A05 PROVEEDORES Y EQUIPO MECANICO |  | 35d | 2009-06-04 | 2009-07-09 | 15 |  |  | 2009-06-04 | 2009-07-09 | 35d | 15d | 0d | Jefe de Adquisiciones [25%]; Equipo de contrataciones [300%]; Transporte [0.1%] | 910h |  | 44,600 | 44,600 |  |
| 19 | 1.3.6 | 1.3.6 A06 PROVEEDORES Y EQUIPO ELECTRICO |  | 35d | 2009-07-09 | 2009-08-13 | 16 |  |  | 2009-07-09 | 2009-08-13 | 35d | 30d | 0d | Jefe de Adquisiciones [25%]; Equipo de contrataciones [300%]; Transporte [0.1%] | 910h |  | 44,400 | 44,400 |  |
| 20 | 1.4 | **1.4 CONSTRUCCION.** |  | 180d | 2009-05-25 | 2009-11-21 |  |  |  | 2009-05-25 | 2009-11-21 | 180d | 0d |  |  | 16750h |  | 883,700.02 | 883,700.02 |  |
| 21 | 1.4.1 | 1.4.1 A01 OBRAS CIVILES DE LIMPIEZA DE GAS |  | 30d | 2009-05-25 | 2009-06-24 | 17FS-10d |  |  | 2009-05-25 | 2009-06-24 | 30d | 0d |  | Jefe de proyecto [25%]; Equipo de contruccion [500%]; Cemento tipo I [560 Bolsa] | 1260h |  | 70,600 | 70,600 |  |
| 22 | 1.4.2 | 1.4.2 A02 OBRAS MECANICAS DE LIMPIEZA DE GAS |  | 30d | 2009-06-29 | 2009-07-29 | 21, 18FS-10d |  |  | 2009-06-29 | 2009-07-29 | 30d | 15d | 5d | Jefe de proyecto [25%]; Equipo de contruccion [500%]; Grua (90 Ton) | 1500h |  | 83,400 | 83,400 |  |
| 23 | 1.4.3 | 1.4.3 A03 OBRAS ELECTRICAS DE LIMPIEZA DE GAS |  | 30d | 2009-08-03 | 2009-09-02 | 22, 19FS-10d |  |  | 2009-08-03 | 2009-09-02 | 30d | 30d | 0d | Jefe de proyecto [25%]; Equipo de contruccion [500%] | 1260h |  | 59,400 | 59,400 |  |
| 24 | 1.4.4 | 1.4.4 A04 TRABAJO CIVILES DE ALMACEN |  | 45d | 2009-05-30 | 2009-07-14 | 17FS-5d |  |  | 2009-05-30 | 2009-07-14 | 45d | 40d | 0d | Jefe de proyecto [25%]; Equipo de puesta en marcha [500%]; Cemento tipo I [800 Bolsa] | 1890h |  | 105,100.01 | 105,100.01 |  |
| 25 | 1.4.5 | 1.4.5 A05 TRABAJO MECANICO DE ALMACEN |  | 45d | 2009-07-14 | 2009-08-28 | 24 |  |  | 2009-07-14 | 2009-08-28 | 45d | 40d | 0d | Jefe de proyecto [25%]; Equipo de contruccion [500%]; Grua (90 Ton) | 2250h |  | 125,100.01 | 125,100.01 |  |
| 26 | 1.4.6 | 1.4.6 A06 TRABAJO ELECTRICO DE ALMACEN |  | 45d | 2009-08-28 | 2009-10-12 | 25 |  |  | 2009-08-28 | 2009-10-12 | 45d | 40d | 0d | Jefe de proyecto [25%]; Equipo de contruccion [500%] | 1890h |  | 89,100.01 | 89,100.01 |  |
| 27 | 1.4.7 | 1.4.7 A07 OBRAS CIVILES EN INSTALACIONES DE ACIDO TOXICO |  | 50d | 2009-06-24 | 2009-08-13 | 21 |  |  | 2009-06-24 | 2009-08-13 | 50d | 0d |  | Jefe de proyecto [25%]; Equipo de contruccion [500%]; Cemento tipo I [700 Bolsa] | 2100h |  | 113,000 | 113,000 |  |
| 28 | 1.4.8 | 1.4.8 A08 OBRAS MECANICAS EN INSTALACIONES DE ACIDO TOXICO |  | 50d | 2009-08-13 | 2009-10-02 | 22, 27 |  |  | 2009-08-13 | 2009-10-02 | 50d | 0d |  | Jefe de proyecto [25%]; Equipo de contruccion [500%]; Grua (90 Ton) | 2500h |  | 139,000 | 139,000 |  |
| 29 | 1.4.9 | 1.4.9 A09 OBRAS ELECTRICAS EN INSTALACIONES DE ACIDO TOXICO |  | 50d | 2009-10-02 | 2009-11-21 | 23, 28 |  |  | 2009-10-02 | 2009-11-21 | 50d | 0d |  | Jefe de proyecto [25%]; Equipo de contruccion [500%] | 2100h |  | 99,000 | 99,000 |  |

| ID | WBS | Task | Duration | Start | Finish | Predecessors | Baseline start | Baseline finish | Baseline duration | Total slack | Resources | Work | Cost | Baseline cost |
| --- | --- | --- | --- | --- | --- | --- | --- | --- | --- | --- | --- | --- | --- | --- |
| 30 | 1.5 | **1.5 PUESTA EN MARCHA** | 160d | 2009-09-02 | 2010-02-09 |  | 2009-09-02 | 2010-02-09 | 160d | 0d |  | 3000h | 162,000 | 162,000 |
| 31 | 1.5.1 | 1.5.1 A01 ZONA LIMPIEZA DE GAS PUESTA EN SERVICIO | 35d | 2009-09-02 | 2009-10-07 | 23 | 2009-09-02 | 2009-10-07 | 35d | 80d | Administrador [50%]; Equipo de puesta en marcha [200%] | 700h | 37,800 | 37,800 |
| 32 | 1.5.2 | 1.5.2 A02 PUESTA EN SERVICIO DE AREA ALMANCEN | 35d | 2009-10-12 | 2009-11-16 | 26 | 2009-10-12 | 2009-11-16 | 35d | 40d | Administrador [50%]; Equipo de puesta en marcha [200%] | 700h | 37,800 | 37,800 |
| 33 | 1.5.3 | 1.5.3 A03 PUESTA EN SERVICIO DE ACIDO TOXICO | 35d | 2009-11-21 | 2009-12-26 | 29 | 2009-11-21 | 2009-12-26 | 35d | 0d | Administrador [50%]; Equipo de puesta en marcha [200%] | 700h | 37,800 | 37,800 |
| 34 | 1.5.4 | 1.5.4 A04 PUESTA EN SERVICIO DE PLANTA DE PLOMO | 45d | 2009-12-26 | 2010-02-09 | 31, 32, 33 | 2009-12-26 | 2010-02-09 | 45d | 0d | Administrador [50%]; Equipo de puesta en marcha [200%] | 900h | 48,600 | 48,600 |
