# Cronograma de Obra

Schedule from MS Project, 2015-10-26 to 2016-01-18, status date 2015-07-24, costs in S/..

## Calendars

- Estándar: Mon-Fri 09:00-13:00, 15:00-19:00; Sat-Sun off.

## Resources

| Resource | Group | Unit | Rate |
| --- | --- | --- | --- |
| Cable NYY | red subterranea | metros | 50 |
| Empalme | red subterranea | unidad | 45 |
| Punta muerta | red subterranea | unidad | 60 |
| Ductos de concreto | red subterranea | metros | 15 |
| Poste de concreto 8.7 | inst. alumbrado | unidad | 450 |
| Pastoral metálico | inst. alumbrado | unidad | 55 |
| Abrazadera metálica | inst. alumbrado | unidad | 12 |
| Luminaria | inst. alumbrado | unidad | 34 |
| Perno de bronce | inst. alumbrado | unidad | 0.8 |
| Poste de concreto 13 | subestación | unidad | 540 |
| Plataforma de concreto | subestación | unidad | 320 |
| Ménsula de concreto | subestación | unidad | 82 |
| Transformador 160 kVA | subestación | unidad | 15000 |
| Tablero de distribución | subestación | unidad | 280 |
| Capataz |  |  | 15 |
| Operario |  |  | 11.25 |
| Ayudante |  |  | 8.75 |
| Liniero |  |  | 11.25 |
| Ing. Supervisor |  |  | 50 |
| Asistente Ing. Supervisor |  |  | 17.5 |

## Schedule

| ID | WBS | Task | Type | Duration | Start | Finish | Predecessors | Total slack | Free slack | Constraint | Resources | Work | Cost |
| --- | --- | --- | --- | --- | --- | --- | --- | --- | --- | --- | --- | --- | --- |
| 1 | 1 | **RED DE DISTRIBUCIÓN SECUNDARIA 220 V** |  | 61d | 2015-10-26 | 2016-01-18 |  | 0d |  | start no earlier than 2015-06-26 |  | 1416h | 99,845.4 |
| 2 | 1.1 | **Inicio de Obra** |  | 7d | 2015-10-26 | 2015-11-03 |  | 0d |  |  |  |  |  |
| 3 | 1.1.1 | Solicitud de Inicio de Obra a Concesionaria |  | 7d | 2015-10-26 | 2015-11-03 |  | 0d |  | start no earlier than 2015-10-26 |  |  |  |
| 4 | 1.1.2 | Inicio de Obra | milestone | 0d | 2015-11-03 | 2015-11-03 | 3 | 0d |  |  |  |  |  |
| 5 | 1.2 | **Suministro de Materiales** |  | 30d | 2015-11-04 | 2015-12-15 |  | 1d |  |  |  |  |  |
| 6 | 1.2.1 | Postes y ménsulas de concreto |  | 14d | 2015-11-04 | 2015-11-23 | 4 | 39d |  |  |  |  |  |
| 7 | 1.2.2 | Cables y conductores |  | 14d | 2015-11-04 | 2015-11-23 | 4 | 39d |  |  |  |  |  |
| 8 | 1.2.3 | Empalmes |  | 10d | 2015-11-04 | 2015-11-17 | 4 | 39d | 4d | start no earlier than 2015-07-09 |  |  |  |
| 9 | 1.2.4 | Transformador |  | 30d | 2015-11-04 | 2015-12-15 | 4 | 24d |  | start no earlier than 2015-07-15 |  |  |  |
| 10 | 1.2.5 | Tableros |  | 20d | 2015-11-04 | 2015-12-01 | 4 | 33d |  |  |  |  |  |
| 11 | 1.3 | **Montaje electrico** |  | 36d | 2015-11-04 | 2015-12-23 |  | 0d |  |  |  | 1336h | 97,855.4 |
| 12 | 1.3.1 | Trazo y replanteo |  | 3d | 2015-11-04 | 2015-11-06 | 4 | 0d |  | start no earlier than 2015-08-17 | Asistente Ing. Supervisor; Capataz; Ayudante | 72h | 990 |
| 13 | 1.3.2 | Excavación y cierre de zanja |  | 9d | 2015-11-18 | 2015-11-30 | 12SS+10d | 0d |  |  | Asistente Ing. Supervisor [50%]; Ayudante [400%] | 216h | 2,100 |
| 14 | 1.3.3 | Tendido de cable subterráneo |  | 5d | 2015-11-24 | 2015-11-30 | 13SS+4d, 7, 8 | 35d |  | start no earlier than 2015-08-06 | Cable NYY [300 metros]; Ayudante; Ductos de concreto [32 metros]; Empalme [33 unidad]; Punta muerta [55 unidad] | 40h | 20,615 |
| 15 | 1.3.4 | Excavación de hoyos para postes de alumbrado público |  | 4d | 2015-11-19 | 2015-11-24 | 13SS+1d | 0d |  |  | Asistente Ing. Supervisor [50%]; Ayudante [400%] | 144h | 1,400 |
| 16 | 1.3.5 | Instalación de postes de alumbrado |  | 8d | 2015-11-25 | 2015-12-04 | 15, 6 | 0d |  | start no earlier than 2015-07-23 | Capataz; Ing. Supervisor; Poste de concreto 8.7 [44 unidad]; Ayudante [600%]; Operario | 256h | 25,240 |
| 17 | 1.3.6 | Instalación de pastorales |  | 4d | 2015-12-07 | 2015-12-10 | 16 | 0d |  |  | Abrazadera metálica [88 unidad]; Asistente Ing. Supervisor; Ayudante [600%]; Capataz; Liniero [200%]; Luminaria [44 unidad]; Pastoral metálico [44 unidad]; Perno de bronce [88 unidad] | 320h | 8,482.4 |
| 18 | 1.3.7 | Instalación estructura de subestaciones |  | 4d | 2015-12-11 | 2015-12-16 | 17 | 0d |  | start no earlier than 2015-07-20 | Ing. Supervisor; Asistente Ing. Supervisor; Ayudante [600%]; Capataz; Ménsula de concreto [4 unidad]; Poste de concreto 13 [4 unidad] | 128h | 5,408 |
| 19 | 1.3.8 | Instalación de puestas a tierra |  | 4d | 2015-12-17 | 2015-12-22 | 18 | 19d |  |  | Capataz; Ayudante [200%] | 96h | 1,040 |
| 20 | 1.3.9 | Equipamiento de Subestaciones |  | 4d | 2015-12-17 | 2015-12-22 | 18, 9, 10 | 0d |  | start no earlier than 2015-08-10 | Ing. Supervisor; Transformador 160 kVA [2 unidad]; Tablero de distribución [2 unidad] | 32h | 32,160 |
| 21 | 1.3.10 | Conexionado General |  | 1d | 2015-12-23 | 2015-12-23 | 20 | 0d |  | start no earlier than 2015-07-24 | Ayudante; Capataz; Asistente Ing. Supervisor; Operario | 32h | 420 |
| 22 | 1.4 | **Pruebas Eléctricas** |  | 12d | 2015-12-24 | 2016-01-08 |  | 0d |  |  |  | 64h | 1,500 |
| 23 | 1.4.1 | Solicitud de Pruebas Eléctricas a Concesionaria |  | 10d | 2015-12-24 | 2016-01-06 | 21 | 0d |  | start no earlier than 2015-08-06 |  |  |  |
| 24 | 1.4.2 | Ejecución de pruebas electricas de media tensión |  | 2d | 2016-01-07 | 2016-01-08 | 23 | 0d |  | start no earlier than 2015-07-15 | Capataz; Ing. Supervisor; Operario; Asistente Ing. Supervisor | 64h | 1,500 |

| ID | WBS | Task | Duration | Start | Finish | Predecessors | Total slack | Constraint | Resources | Work | Cost |
| --- | --- | --- | --- | --- | --- | --- | --- | --- | --- | --- | --- |
| 25 | 1.5 | **Puesta en Servicio** | 6d | 2016-01-11 | 2016-01-18 |  | 0d |  |  | 16h | 490 |
| 26 | 1.5.1 | Solicitud de Puesta en Servicio a Concesionaria | 5d | 2016-01-11 | 2016-01-15 | 24 | 0d | start no earlier than 2015-07-23 |  |  |  |
| 27 | 1.5.2 | Ejecución de Maniobra de Conexión | 1d | 2016-01-18 | 2016-01-18 | 26 | 0d | start no earlier than 2015-08-06 | Operario; Ing. Supervisor | 16h | 490 |
