# Proyecto. Servico de Pintado de un Barco

Schedule from MS Project, 2016-02-01 to 2016-02-15, costs in S/..
Toshiba

## Calendars

- Calendario del Servicio de Pintado: Mon-Fri 07:30-13:00, 14:00-16:30; Sat-Sun off. Exceptions (off unless hours are given): 2016-02-10 (Aniversario de la Empresa).

## Resources

| Resource | Group | Unit | Rate |
| --- | --- | --- | --- |
| Sup.Gabriel | Supervisor |  | 12 |
| Ing. David | Ingenierio |  | 15 |
| Ing. Manuel | Ingenierio |  | 15 |
| Ing. Jose | Ingeniero |  | 15 |
| Oper.Juan | Operario |  | 10 |
| Oper-Marcos | Operario |  | 10 |
| Oper.Damian | Operario |  | 10 |
| Oper.Hernan | Operario |  | 10 |
| Pint. Esteban | Pintor |  | 10 |
| Pint. Alex | Pintor |  | 10 |
| Pint. Gustavo | Pintor |  | 10 |
| Pint.Leonardo | Pintor |  | 10 |
| Maniob.Carlos | Maniobrista |  | 10 |
| Maniob.Angel | Maniobrista |  | 10 |
| Hidrolavadora | Maquinaria |  | 70 |
| Arenadora | Maquinaria |  | 90 |
| Compresora | Maquinaria |  | 80 |
| Pintura-Jet62 |  | Galon | 60 |
| Pintura-Jet72-V |  | Galon | 65 |
| Pintura-Jet72-G |  | Galon | 65.5 |
| Pintura-Pacific-Jet |  | Galon | 60 |
| Granallas de Zinc |  | Tonelada | 130 |
| Agua |  | m3 | 2.5 |

## Schedule

| ID | WBS | Task | Type | Duration | Start | Finish | Predecessors | Baseline start | Baseline finish | Baseline duration | Total slack | Constraint | Resources | Work | Cost | Baseline cost |
| --- | --- | --- | --- | --- | --- | --- | --- | --- | --- | --- | --- | --- | --- | --- | --- | --- |
| 1 | 1 | inicio del Proyecto | milestone | 0d | 2016-02-01 07:30 | 2016-02-01 07:30 |  | 2016-02-01 07:30 | 2016-02-01 07:30 |  | 0d |  |  |  |  |  |
| 2 | 2 | **INGRESO DEL BARCO** |  | 1d | 2016-02-01 07:30 | 2016-02-01 16:30 |  | 2016-02-01 07:30 | 2016-02-01 16:30 | 1d | 0d |  |  | 26.5h | 336.5 | 336.5 |
| 3 | 2.1 | Inicio de Ingreso del barco | milestone | 0d | 2016-02-01 07:30 | 2016-02-01 07:30 | 1 | 2016-02-01 07:30 | 2016-02-01 07:30 |  | 0d |  |  |  |  |  |
| 4 | 2.2 | Coordinar detalles de procedimientos a realizar |  | 2.5h | 2016-02-01 07:30 | 2016-02-01 10:00 | 3 | 2016-02-01 07:30 | 2016-02-01 10:00 | 2.5h | 0d |  | Ing. David; Ing. Jose; Ing. Manuel | 7.5h | 112.5 | 112.5 |
| 5 | 2.3 | Confeccionar Cama de Varado Normal |  | 1.5h | 2016-02-01 07:30 | 2016-02-01 09:00 | 3 | 2016-02-01 07:30 | 2016-02-01 09:00 | 1.5h | 0.12d |  | Oper.Damian; Oper.Hernan; Oper.Juan; Oper-Marcos | 6h | 60 | 60 |
| 6 | 2.4 | Inspeccionar Cama de Varado Normal |  | 1h | 2016-02-01 10:00 | 2016-02-01 11:00 | 4, 5 | 2016-02-01 10:00 | 2016-02-01 11:00 | 1h | 0d |  | Sup.Gabriel | 1h | 12 | 12 |
| 7 | 2.5 | Abrir Compuerta |  | 1.5h | 2016-02-01 11:00 | 2016-02-01 12:30 | 6 | 2016-02-01 11:00 | 2016-02-01 12:30 | 1.5h | 0d |  | Maniob.Angel; Maniob.Carlos | 3h | 30 | 30 |
| 8 | 2.6 | Ingresar barco a dique |  | 1h | 2016-02-01 12:30 | 2016-02-01 14:30 | 7 | 2016-02-01 12:30 | 2016-02-01 14:30 | 1h | 0d |  | Sup.Gabriel; Ing. David; Ing. Jose; Ing. Manuel | 4h | 57 | 57 |
| 9 | 2.7 | Expulsar agua del dique |  | 1h | 2016-02-01 14:30 | 2016-02-01 15:30 | 8 | 2016-02-01 14:30 | 2016-02-01 15:30 | 1h | 0d |  | Maniob.Angel; Maniob.Carlos | 2h | 20 | 20 |
| 10 | 2.8 | Inspeccionar el estado del barco |  | 1h | 2016-02-01 15:30 | 2016-02-01 16:30 | 9 | 2016-02-01 15:30 | 2016-02-01 16:30 | 1h | 0d |  | Ing. David; Ing. Jose; Ing. Manuel | 3h | 45 | 45 |
| 11 | 2.9 | Fin de Ingreso del barco | milestone | 0d | 2016-02-01 16:30 | 2016-02-01 16:30 | 10 | 2016-02-01 16:30 | 2016-02-01 16:30 |  | 0d |  |  |  |  |  |
| 12 | 3 | **HIDROLAVADO** |  | 1.44d | 2016-02-01 16:30 | 2016-02-03 11:00 |  | 2016-02-01 16:30 | 2016-02-03 11:00 | 1.44d | 0d |  |  | 81.5h | 3,300 | 3,300 |
| 13 | 3.1 | Inicio de Hidrolavado | milestone | 0d | 2016-02-01 16:30 | 2016-02-01 16:30 | 11 | 2016-02-01 16:30 | 2016-02-01 16:30 |  | 0d | start no earlier than 2016-01-20 07:30 |  |  |  |  |
| 14 | 3.2 | Limpiar el Plan de Dique (incrustaciones) |  | 1h | 2016-02-02 07:30 | 2016-02-02 08:30 | 13 | 2016-02-02 07:30 | 2016-02-02 08:30 | 1h | 0d |  | Oper.Damian; Oper.Hernan; Oper.Juan; Oper-Marcos | 4h | 40 | 40 |
| 15 | 3.3 | **HIDROLAVADO OBRA VIVA** |  | 1d | 2016-02-02 08:30 | 2016-02-03 08:30 |  | 2016-02-02 08:30 | 2016-02-03 08:30 | 1d | 0d |  |  | 32h | 1,530 | 1,530 |
| 16 | 3.3.1 | Inicio de Hidrolavado Obra Viva | milestone | 0d | 2016-02-02 08:30 | 2016-02-02 08:30 | 14 | 2016-02-02 08:30 | 2016-02-02 08:30 |  | 0d |  |  |  |  |  |
| 17 | 3.3.2 | Trasladar e Instalar equipos del taller a la Zona de Trabajo |  | 1h | 2016-02-02 09:30 | 2016-02-02 10:30 | 16 | 2016-02-02 09:30 | 2016-02-02 10:30 | 1h | 0d |  | Oper.Damian; Oper.Hernan; Oper.Juan; Oper-Marcos; Hidrolavadora [400%] | 8h | 320 | 320 |
| 18 | 3.3.3 | Hidrolavar y limpiar Obra Viva con Agua a Baja Presión (3000 PSI) |  | 2h | 2016-02-02 14:30 | 2016-02-02 16:30 | 17 | 2016-02-02 14:30 | 2016-02-02 16:30 | 2h | 0d |  | Oper.Damian; Oper.Hernan; Oper.Juan; Oper-Marcos; Hidrolavadora [400%]; Agua [100 m3] | 16h | 890 | 890 |
| 19 | 3.3.4 | Desinstalar y trasladar Equipo de la Zona de Trabajo al Taller |  | 1h | 2016-02-03 07:30 | 2016-02-03 08:30 | 18 | 2016-02-03 07:30 | 2016-02-03 08:30 | 1h | 0d |  | Oper.Damian; Oper.Hernan; Oper.Juan; Oper-Marcos; Hidrolavadora [400%] | 8h | 320 | 320 |
| 20 | 3.3.5 | Fin de Hidrolavado Obra Viva | milestone | 0d | 2016-02-03 08:30 | 2016-02-03 08:30 | 19 | 2016-02-03 08:30 | 2016-02-03 08:30 |  | 0d |  |  |  |  |  |
| 21 | 3.4 | **HIDROLAVADO OBRA MUERTA** |  | 1d | 2016-02-02 08:30 | 2016-02-03 08:30 |  | 2016-02-02 08:30 | 2016-02-03 08:30 | 1d | 0d |  |  | 36h | 1,627.5 | 1,627.5 |
| 22 | 3.4.1 | Inicio de Hidrolavado Obra Muerta | milestone | 0d | 2016-02-02 08:30 | 2016-02-02 08:30 | 14 | 2016-02-02 08:30 | 2016-02-02 08:30 |  | 0d |  |  |  |  |  |
| 23 | 3.4.2 | Trasladar e Instalar equipos del taller a la Zona de Trabajo |  | 1h | 2016-02-02 08:30 | 2016-02-02 09:30 | 22 | 2016-02-02 08:30 | 2016-02-02 09:30 | 1h | 0d |  | Hidrolavadora [400%]; Oper.Damian; Oper.Hernan; Oper.Juan; Oper-Marcos | 8h | 320 | 320 |
| 24 | 3.4.3 | HIDROLAVADO LIMPIEZA DE Obra Muerta CON AGUA A BAJA PRESION (3000 PSI) |  | 3h | 2016-02-02 10:30 | 2016-02-02 14:30 | 23 | 2016-02-02 10:30 | 2016-02-02 14:30 | 3h | 0d |  | Oper.Damian; Oper.Hernan; Oper.Juan; Oper-Marcos; Hidrolavadora [400%]; Agua [75 m3] | 24h | 1,147.5 | 1,147.5 |
| 25 | 3.4.4 | Desinstalar y trasladar Equipo de la Zona de Trabajo al Taller |  | 1h | 2016-02-03 07:30 | 2016-02-03 08:30 | 24 | 2016-02-03 07:30 | 2016-02-03 08:30 | 1h | 0d |  | Hidrolavadora [400%]; Oper.Damian; Oper.Hernan; Oper.Juan; Oper-Marcos | 4h | 160 | 160 |
| 26 | 3.4.5 | Fin de Hidrolavado Obra Muerta | milestone | 0d | 2016-02-03 08:30 | 2016-02-03 08:30 | 25 | 2016-02-03 08:30 | 2016-02-03 08:30 |  | 0d |  |  |  |  |  |
| 27 | 3.5 | Controlar Calidad de Fase |  | 0.5h | 2016-02-03 08:30 | 2016-02-03 09:00 | 20, 26 | 2016-02-03 08:30 | 2016-02-03 09:00 | 0.5h | 0d |  | Ing. David; Ing. Jose; Ing. Manuel | 1.5h | 22.5 | 22.5 |
| 28 | 3.6 | Limpiar el Plan de Dique (incrustaciones) |  | 2h | 2016-02-03 09:00 | 2016-02-03 11:00 | 27 | 2016-02-03 09:00 | 2016-02-03 11:00 | 2h | 0d |  | Oper.Damian; Oper.Hernan; Oper.Juan; Oper-Marcos | 8h | 80 | 80 |
| 29 | 3.7 | Fin de Hidrolavado | milestone | 0d | 2016-02-03 11:00 | 2016-02-03 11:00 | 28 | 2016-02-03 11:00 | 2016-02-03 11:00 |  | 0d |  |  |  |  |  |

| ID | WBS | Task | Type | Duration | Start | Finish | Predecessors | Baseline start | Baseline finish | Baseline duration | Total slack | Resources | Work | Cost | Baseline cost |
| --- | --- | --- | --- | --- | --- | --- | --- | --- | --- | --- | --- | --- | --- | --- | --- |
| 30 | 4 | **ARENADO** |  | 2.44d | 2016-02-03 11:00 | 2016-02-05 15:30 |  | 2016-02-03 11:00 | 2016-02-05 15:30 | 2.44d | 0d |  | 125.5h | 5,652.5 | 5,652.5 |
| 31 | 4.1 | Inicio de Arenado | milestone | 0d | 2016-02-03 11:00 | 2016-02-03 11:00 | 29 | 2016-02-03 11:00 | 2016-02-03 11:00 |  | 0d |  |  |  |  |
| 32 | 4.2 | Trasladar e Instalar equipos del taller a la Zona de Trabajo |  | 1h | 2016-02-03 11:00 | 2016-02-03 12:00 | 31 | 2016-02-03 11:00 | 2016-02-03 12:00 | 1h | 0d | Oper.Damian; Oper.Hernan; Oper.Juan; Oper-Marcos; Arenadora [400%] | 8h | 400 | 400 |
| 33 | 4.3 | Suministrar Escoria de Cobre a Zona de Trabajo |  | 0.5h | 2016-02-03 12:00 | 2016-02-03 12:30 | 32 | 2016-02-03 12:00 | 2016-02-03 12:30 | 0.5h | 0d | Oper.Damian; Oper.Hernan; Oper.Juan; Oper-Marcos | 2h | 20 | 20 |
| 34 | 4.4 | ARENADO DE LA OBRA VIVA SA-1, AREA 315 M2 AL 100% |  | 9h | 2016-02-03 12:30 | 2016-02-04 14:30 | 32, 33 | 2016-02-03 12:30 | 2016-02-04 14:30 | 9h | 0d | Oper.Damian; Oper.Hernan; Oper.Juan; Oper-Marcos; Granallas de Zinc [2 Tonelada]; Arenadora [400%] | 72h | 3,860 | 3,860 |
| 35 | 4.5 | ARENADO DE LA OBRA MUERTA SA-1, AREA 62 M2 AL 100% |  | 5h | 2016-02-04 14:30 | 2016-02-05 10:30 | 34 | 2016-02-04 14:30 | 2016-02-05 10:30 | 5h | 0d | Arenadora; Oper.Damian; Oper.Hernan; Oper.Juan; Oper-Marcos; Granallas de Zinc [1.5 Tonelada] | 25h | 845 | 845 |
| 36 | 4.6 | Desinstalar y trasladar Equipo de la Zona de Trabajo al Taller |  | 1h | 2016-02-05 10:30 | 2016-02-05 11:30 | 35 | 2016-02-05 10:30 | 2016-02-05 11:30 | 1h | 0d | Oper.Damian; Oper.Hernan; Oper.Juan; Oper-Marcos; Arenadora [400%] | 8h | 400 | 400 |
| 37 | 4.7 | Limpiar la Escoria de Cobre a Zona de Trabajo |  | 1.5h | 2016-02-05 11:30 | 2016-02-05 13:00 | 36 | 2016-02-05 11:30 | 2016-02-05 13:00 | 1.5h | 0d | Oper.Damian; Oper.Hernan; Oper.Juan; Oper-Marcos | 6h | 60 | 60 |
| 38 | 4.8 | Controlar Calidad de Fase |  | 1.5h | 2016-02-05 14:00 | 2016-02-05 15:30 | 37 | 2016-02-05 14:00 | 2016-02-05 15:30 | 1.5h | 0d | Ing. David; Ing. Jose; Ing. Manuel | 4.5h | 67.5 | 67.5 |
| 39 | 4.9 | Fin de Arenado | milestone | 0d | 2016-02-05 15:30 | 2016-02-05 15:30 | 38 | 2016-02-05 15:30 | 2016-02-05 15:30 |  | 0d |  |  |  |  |
| 40 | 5 | **PINTADO** |  | 4.38d | 2016-02-05 15:30 | 2016-02-15 09:30 |  | 2016-02-05 15:30 | 2016-02-15 09:30 | 4.38d | 0d |  | 245h | 58,575 | 58,575 |
| 41 | 5.1 | Inicio del Pintado | milestone | 0d | 2016-02-05 15:30 | 2016-02-05 15:30 | 39 | 2016-02-05 15:30 | 2016-02-05 15:30 |  | 0d |  |  |  |  |
| 42 | 5.2 | Trasladar e Instalar equipos del taller a la Zona de Trabajo |  | 1h | 2016-02-05 15:30 | 2016-02-05 16:30 | 41 | 2016-02-05 15:30 | 2016-02-05 16:30 | 1h | 0d | Pint. Alex; Pint. Esteban; Pint. Gustavo; Pint.Leonardo | 4h | 40 | 40 |
| 43 | 5.3 | Pintar PRIMERA CAPA OBRA VIVA |  | 4.5h | 2016-02-08 14:30 | 2016-02-09 10:00 | 42 | 2016-02-08 14:30 | 2016-02-09 10:00 | 4.5h | 0d | Pint. Alex; Pint. Esteban; Pint. Gustavo; Pint.Leonardo; Pintura-Jet62 [100 Galon]; Compresora [400%] | 36h | 7,620 | 7,620 |
| 44 | 5.4 | PINTADO PRIMERA CAPA OBRA MUERTA |  | 6h | 2016-02-08 07:30 | 2016-02-08 14:30 | 42 | 2016-02-08 07:30 | 2016-02-08 14:30 | 6h | 0.56d | Pintura-Jet62 [95 Galon]; Compresora [400%]; Pint. Alex; Pint. Esteban; Pint. Gustavo; Pint.Leonardo | 48h | 7,860 | 7,860 |
| 45 | 5.5 | Controlar Calidad de Capa |  | 1h | 2016-02-09 10:00 | 2016-02-09 11:00 | 43, 44 | 2016-02-09 10:00 | 2016-02-09 11:00 | 1h | 0d | Ing. David; Ing. Jose; Ing. Manuel | 3h | 45 | 45 |
| 46 | 5.6 | PINTADO SEGUNDA CAPA OBRA VIVA |  | 3h | 2016-02-09 11:00 | 2016-02-09 15:00 | 45 | 2016-02-09 11:00 | 2016-02-09 15:00 | 3h | 0.38d | Pintura-Jet72-G [95 Galon]; Compresora [400%]; Pint. Alex; Pint. Esteban; Pint. Gustavo; Pint.Leonardo | 24h | 7,302.5 | 7,302.5 |
| 47 | 5.7 | PINTADO SEGUNDA CAPA OBRA MUERTA |  | 3h | 2016-02-09 15:00 | 2016-02-11 09:00 | 45 | 2016-02-09 15:00 | 2016-02-11 09:00 | 3h | 0d | Pint. Alex; Pint. Esteban; Pint. Gustavo; Pint.Leonardo; Compresora [400%]; Pintura-Jet72-G [85 Galon] | 24h | 6,647.5 | 6,647.5 |
| 48 | 5.8 | Controlar Calidad de Capa |  | 1h | 2016-02-11 09:00 | 2016-02-11 10:00 | 46, 47 | 2016-02-11 09:00 | 2016-02-11 10:00 | 1h | 0d | Ing. David; Ing. Jose; Ing. Manuel | 3h | 45 | 45 |
| 49 | 5.9 | PINTADO TERCERA CAPA OBRA VIVA |  | 3h | 2016-02-11 10:00 | 2016-02-11 13:00 | 48 | 2016-02-11 10:00 | 2016-02-11 13:00 | 3h | 0.38d | Pintura-Jet72-V [90 Galon]; Compresora [400%]; Pint. Alex; Pint. Esteban; Pint. Gustavo; Pint.Leonardo | 24h | 6,930 | 6,930 |
| 50 | 5.10 | PINTADO TERCERA CAPA OBRA MUERTA |  | 3h | 2016-02-11 14:00 | 2016-02-12 08:00 | 48 | 2016-02-11 14:00 | 2016-02-12 08:00 | 3h | 0d | Compresora; Pint. Alex; Pint. Esteban; Pint. Gustavo; Pint.Leonardo; Pintura-Jet72-V [85 Galon] | 15h | 5,885 | 5,885 |
| 51 | 5.11 | Controlar Calidad de Capa |  | 1h | 2016-02-12 08:00 | 2016-02-12 09:00 | 49, 50 | 2016-02-12 08:00 | 2016-02-12 09:00 | 1h | 0d | Ing. David; Ing. Jose; Ing. Manuel | 3h | 45 | 45 |
| 52 | 5.12 | PINTADO CUARTA CAPA OBRA VIVA |  | 3h | 2016-02-12 09:00 | 2016-02-12 12:00 | 51 | 2016-02-12 09:00 | 2016-02-12 12:00 | 3h | 0d | Pintura-Pacific-Jet [100 Galon]; Compresora [400%]; Pint. Alex; Pint. Esteban; Pint. Gustavo; Pint.Leonardo | 24h | 7,080 | 7,080 |
| 53 | 5.13 | PINTADO CUARTA CAPA OBRA MUERTA |  | 3h | 2016-02-12 12:00 | 2016-02-12 16:00 | 52 | 2016-02-12 12:00 | 2016-02-12 16:00 | 3h | 0d | Pintura-Pacific-Jet [100 Galon]; Compresora [400%]; Pint. Alex; Pint. Esteban; Pint. Gustavo; Pint.Leonardo | 24h | 7,080 | 7,080 |
| 54 | 5.14 | PINTADO DE NUMEROS DE CALADO |  | 0.5h | 2016-02-12 16:00 | 2016-02-12 16:30 | 53 | 2016-02-12 16:00 | 2016-02-12 16:30 | 0.5h | 0d | Compresora [200%]; Pint. Esteban; Pint. Gustavo; Pintura-Jet62 [25 Galon] | 2h | 1,590 | 1,590 |
| 55 | 5.15 | Desinstalar y trasladar Equipo de la Zona de Trabajo al Taller |  | 1h | 2016-02-15 07:30 | 2016-02-15 08:30 | 54 | 2016-02-15 07:30 | 2016-02-15 08:30 | 1h | 0d | Pint. Alex; Pint. Esteban; Pint. Gustavo; Pint.Leonardo; Compresora [400%] | 8h | 360 | 360 |
| 56 | 5.16 | Controlar Calidad de Fase |  | 1h | 2016-02-15 08:30 | 2016-02-15 09:30 | 55 | 2016-02-15 08:30 | 2016-02-15 09:30 | 1h | 0d | Ing. David; Ing. Jose; Ing. Manuel | 3h | 45 | 45 |
| 57 | 5.17 | Fin de Pintado | milestone | 0d | 2016-02-15 09:30 | 2016-02-15 09:30 | 56 | 2016-02-15 09:30 | 2016-02-15 09:30 |  | 0d |  |  |  |  |

| ID | WBS | Task | Type | Duration | Start | Finish | Predecessors | Baseline start | Baseline finish | Baseline duration | Total slack | Resources | Work | Cost | Baseline cost |
| --- | --- | --- | --- | --- | --- | --- | --- | --- | --- | --- | --- | --- | --- | --- | --- |
| 58 | 6 | **SALIDA DEL BARCO** |  | 0.75d | 2016-02-15 09:30 | 2016-02-15 16:30 |  | 2016-02-15 09:30 | 2016-02-15 16:30 | 0.75d | 0d |  | 20h | 267 | 267 |
| 59 | 6.1 | Incio de la salida del barco | milestone | 0d | 2016-02-15 09:30 | 2016-02-15 09:30 | 57 | 2016-02-15 09:30 | 2016-02-15 09:30 |  | 0d |  |  |  |  |
| 60 | 6.2 | Inspeccionar el Area |  | 2h | 2016-02-15 09:30 | 2016-02-15 11:30 | 59 | 2016-02-15 09:30 | 2016-02-15 11:30 | 2h | 0d | Ing. David; Ing. Jose; Ing. Manuel | 6h | 90 | 90 |
| 61 | 6.3 | Bombear agua |  | 2h | 2016-02-15 11:30 | 2016-02-15 14:30 | 60 | 2016-02-15 11:30 | 2016-02-15 14:30 | 2h | 0d | Maniob.Angel; Maniob.Carlos | 4h | 40 | 40 |
| 62 | 6.4 | Maniobrar salida del Buque |  | 1h | 2016-02-15 14:30 | 2016-02-15 15:30 | 61 | 2016-02-15 14:30 | 2016-02-15 15:30 | 1h | 0d | Ing. David; Ing. Jose; Ing. Manuel; Sup.Gabriel | 4h | 57 | 57 |
| 63 | 6.5 | Expulsar agua del dique |  | 1h | 2016-02-15 15:30 | 2016-02-15 16:30 | 62 | 2016-02-15 15:30 | 2016-02-15 16:30 | 1h | 0d | Maniob.Angel; Maniob.Carlos | 4h | 50 | 50 |
| 64 | 6.6 | Desinstalar la cama | milestone | 0h | 2016-02-15 16:30 | 2016-02-15 16:30 | 63 | 2016-02-15 16:30 | 2016-02-15 16:30 |  | 0d | Oper.Damian; Oper.Hernan; Oper.Juan; Oper-Marcos | 2h | 30 | 30 |
| 65 | 6.7 | Fin de Salida del barco | milestone | 0d | 2016-02-15 16:30 | 2016-02-15 16:30 | 64 | 2016-02-15 16:30 | 2016-02-15 16:30 |  | 0d |  |  |  |  |
| 66 | 7 | Fin de Proyecto | milestone | 0d | 2016-02-15 16:30 | 2016-02-15 16:30 | 65 | 2016-02-15 16:30 | 2016-02-15 16:30 |  | 0d |  |  |  |  |

Notes:
- 63: Tarea con 1 hora Extra x cada recurso
- 64: Tarea con 0.5 horas extra por cada Recurso
